# CMU_FLOOR4+Resource

Schedule from MS Project, 2018-10-17 to 2020-01-30, costs in ฿.

## Calendars

- CMU-Library Project Calendar: Mon-Sun 08:00-12:00, 13:00-17:00.

## Resources

| Resource |
| --- |
| General worker |
| Skilled carpenter |
| Electrician |
| Furniture |
| Sanitary-Plumber |

## Schedule

| ID | WBS | Task | Duration | Start | Finish | Predecessors | Total slack | Free slack | Resources | Work | Cost |
| --- | --- | --- | --- | --- | --- | --- | --- | --- | --- | --- | --- |
| 1 | 1 | **Chiang Mai Library Renovation Project** | 471d | 2018-10-17 | 2020-01-30 |  | 0d |  |  | 18760h | 14,438,297.92 |
| 2 | 1.1 | **Renovation on the fourth floor** | 471d | 2018-10-17 | 2020-01-30 |  | 0d |  |  | 12048h | 8,076,511.71 |
| 3 | 1.1.1 | Demolition work on the 4th floor | 30d | 2018-10-17 | 2018-11-15 |  | 0d |  | General worker | 240h | 169,430.58 |
| 4 | 1.1.2 | **Architecture Work on the Fourth Floor** | 396d | 2018-12-31 | 2020-01-30 |  | 0d |  |  | 2040h | 4,211,247.46 |
| 5 | 1.1.2.1 | Ceiling work | 30d | 2019-03-01 | 2019-03-30 | 6, 8, 9 | 306d |  | Skilled carpenter | 240h | 1,563,285.94 |
| 6 | 1.1.2.2 | Floor work | 60d | 2018-12-31 | 2019-02-28 | 3FS+45d | 306d | 0d | General worker | 480h | 1,086,137.61 |
| 7 | 1.1.2.3 | Wall work | 30d | 2018-12-31 | 2019-01-29 | 3FS+45d | 306d | 0d | General worker | 240h | 269,531.27 |
| 8 | 1.1.2.4 | Door-Window Work | 30d | 2019-01-30 | 2019-02-28 | 7 | 306d | 0d | Skilled carpenter | 240h | 293,793.17 |
| 9 | 1.1.2.5 | Staircase Work | 30d | 2019-01-30 | 2019-02-28 | 7 | 306d | 0d | General worker | 240h | 14,855.46 |
| 10 | 1.1.2.6 | Painting work | 30d | 2019-03-01 | 2019-03-30 | 6, 8, 9 | 306d |  | General worker | 240h | 214,728.86 |
| 11 | 1.1.2.7 | **Sanitary ware** | 315d | 2019-03-22 | 2020-01-30 |  | 0d |  |  | 360h | 768,915.15 |
| 12 | 1.1.2.7.1 | Zone T-1 the area in front of the original buidling | 15d | 2019-08-19 | 2019-09-02 | 13FS+135d | 0d |  | Sanitary-Plumber | 120h | 256,305.05 |
| 13 | 1.1.2.7.2 | Zone T-2 the area in the middle | 15d | 2019-03-22 | 2019-04-05 | 18, 22 | 0d |  | Sanitary-Plumber | 120h | 256,305.05 |
| 14 | 1.1.2.7.3 | Zone T3 the area behind the new building | 15d | 2020-01-16 | 2020-01-30 | 12FS+135d | 0d |  | Sanitary-Plumber | 120h | 256,305.05 |
| 15 | 1.1.3 | **Sanitation system work on the fourth floor** | 408d | 2018-11-16 | 2019-12-28 |  | 0d |  |  | 6048h | 203,774.16 |
| 16 | 1.1.3.1 | **Water supply pipe system work** | 408d | 2018-11-16 | 2019-12-28 |  | 0d |  |  | 3024h | 89,189.4 |
| 17 | 1.1.3.1.1 | Zone T-1 the area in front of the original buidling | 126d | 2019-04-06 | 2019-08-09 | 18FS+15d | 33d | 0d | Sanitary-Plumber | 1008h | 29,729.8 |
| 18 | 1.1.3.1.2 | Zone T-2 the area in the middle | 126d | 2018-11-16 | 2019-03-21 | 3 | 0d |  | Sanitary-Plumber | 1008h | 29,729.8 |
| 19 | 1.1.3.1.3 | Zone T3 the area behind the new building | 126d | 2019-08-25 | 2019-12-28 | 17FS+15d | 33d |  | Sanitary-Plumber | 1008h | 29,729.8 |
| 20 | 1.1.3.2 | **Sewage pipe system, general sewer and air pipe** | 408d | 2018-11-16 | 2019-12-28 |  | 0d |  |  | 3024h | 114,584.76 |
| 21 | 1.1.3.2.1 | Zone T-1 the area in front of the original buidling | 126d | 2019-04-06 | 2019-08-09 | 22FS+15d | 33d | 0d | Sanitary-Plumber | 1008h | 38,194.92 |
| 22 | 1.1.3.2.2 | Zone T-2 the area in the middle | 126d | 2018-11-16 | 2019-03-21 | 18SS | 0d |  | Sanitary-Plumber | 1008h | 38,194.92 |
| 23 | 1.1.3.2.3 | Zone T3 the area behind the new building | 126d | 2019-08-25 | 2019-12-28 | 21FS+15d | 33d |  | Sanitary-Plumber | 1008h | 38,194.92 |
| 24 | 1.1.4 | **Electrical system work on the 4th floor** | 117d | 2018-11-30 | 2019-03-26 |  | 310d |  |  | 2400h | 1,440,571.68 |
| 25 | 1.1.4.1 | Electric lamps | 30d | 2019-02-25 | 2019-03-26 | 27FS+7d | 310d |  | Electrician | 240h | 726,675.37 |
| 26 | 1.1.4.2 | Switch and electrical socket | 30d | 2019-02-25 | 2019-03-26 | 27FS+7d | 310d |  | Electrician | 240h | 317,559.49 |
| 27 | 1.1.4.3 | Electrical work and conduits | 80d | 2018-11-30 | 2019-02-17 | 30SS+30d | 310d | 0d | Electrician | 640h | 175,019.46 |
| 28 | 1.1.4.4 | Speaker cable work and conduit | 80d | 2018-11-30 | 2019-02-17 | 30SS+30d | 347d |  | Electrician | 640h | 174,291.16 |
| 29 | 1.1.4.5 | CCTV system work, conduit pipe | 80d | 2018-11-30 | 2019-02-17 | 30SS+30d | 347d |  | Electrician | 640h | 47,026.2 |
| 30 | 1.1.5 | Durable goods and made to order work on the fourth floor | 165d | 2018-10-31 | 2019-04-13 | 3SS+14d | 277d | 0d | Skilled carpenter | 1320h | 2,051,487.83 |

| ID | WBS | Task | Duration | Start | Finish | Predecessors | Total slack | Resources | Work | Cost |
| --- | --- | --- | --- | --- | --- | --- | --- | --- | --- | --- |
| 31 | 1.2 | **Computer system and fire alarm system** | 160d | 2018-11-30 | 2019-05-08 |  | 267d |  | 2560h | 638,051.49 |
| 32 | 1.2.1 | **Computer system** | 160d | 2018-11-30 | 2019-05-08 |  | 267d |  | 2560h | 638,051.49 |
| 33 | 1.2.1.1 | Fourth floor | 160d | 2018-11-30 | 2019-05-08 | 3FS+14d | 267d | Electrician | 1280h | 337,667.41 |
| 34 | 1.2.1.2 | **Fire Alarm System** | 160d | 2018-11-30 | 2019-05-08 |  | 267d |  | 1280h | 300,384.08 |
| 35 | 1.2.1.2.1 | Fourth floor | 160d | 2018-11-30 | 2019-05-08 | 3FS+14d | 267d | Electrician | 1280h | 300,384.08 |
| 36 | 1.3 | **Exterior paint, repair and exterior decoration of the building** | 90d | 2018-11-30 | 2019-02-27 |  | 337d |  | 2160h | 4,422,753.82 |
| 37 | 1.3.1 | **Exterior paint and exterior surface repair** | 90d | 2018-11-30 | 2019-02-27 |  | 337d |  | 2160h | 4,422,753.82 |
| 38 | 1.3.1.1 | Demolition of roof waterproofing (Dismantled) | 90d | 2018-11-30 | 2019-02-27 | 3FS+14d | 337d | General worker | 720h | 92,002.54 |
| 39 | 1.3.1.2 | Sand blasting waterproofing sheet material | 90d | 2018-11-30 | 2019-02-27 | 3FS+14d | 337d | General worker | 720h | 1,051,457.6 |
| 40 | 1.3.1.3 | Polyurethane waterproofing, ultra-flexible oil formula, resistant to UV light, Xander, Ardex or equivalent. | 90d | 2018-11-30 | 2019-02-27 | 3FS+14d | 337d | General worker | 720h | 3,279,293.68 |
| 41 | 1.4 | **Durable Goods** | 160d | 2018-11-30 | 2019-05-08 |  | 267d |  | 1992h | 1,300,980.9 |
| 42 | 1.4.1 | **Floating furniture** | 15d | 2019-04-14 | 2019-04-28 |  | 277d |  | 120h | 825,783.2 |
| 43 | 1.4.1.1 | Floating furniture on the fourth floor | 15d | 2019-04-14 | 2019-04-28 | 30 | 277d | Skilled carpenter | 120h | 825,783.2 |
| 44 | 1.4.2 | **Repair furniture work** | 30d | 2019-03-30 | 2019-04-28 |  | 277d |  | 240h | 81,855 |
| 45 | 1.4.2.1 | Furniture repair work on the fourth floor | 30d | 2019-03-30 | 2019-04-28 | 30FS-15d | 277d | Skilled carpenter | 240h | 81,855 |
| 46 | 1.4.3 | **Curtain work** | 15d | 2019-04-14 | 2019-04-28 |  | 277d |  | 120h | 113,741 |
| 47 | 1.4.3.1 | Curtain on the fourth floor | 15d | 2019-04-14 | 2019-04-28 | 30 | 277d | Skilled carpenter | 120h | 113,741 |
| 48 | 1.4.4 | **Signs** | 15d | 2019-04-14 | 2019-04-28 |  | 277d |  | 120h | 26,750 |
| 49 | 1.4.4.1 | Signs on the fourth floor | 15d | 2019-04-14 | 2019-04-28 | 30 | 277d | Skilled carpenter | 120h | 26,750 |
| 50 | 1.4.5 | **TWO WIRE REMOTE CONTROL LIGHTING SYSTEM** | 160d | 2018-11-30 | 2019-05-08 |  | 267d |  | 1280h | 247,715.7 |
| 51 | 1.4.5.1 | Two wire remote control lighting system for the fourth floor | 160d | 2018-11-30 | 2019-05-08 | 3FS+14d | 267d | Electrician | 1280h | 247,715.7 |
| 52 | 1.4.6 | **Sound system (Using previous speakers)** | 7d | 2019-04-07 | 2019-04-13 |  | 292d |  | 56h | 3,210 |
| 53 | 1.4.6.1 | Sound system for the forth floor | 7d | 2019-04-07 | 2019-04-13 | 30FS-7d | 292d | Electrician | 56h | 3,210 |
| 54 | 1.4.7 | **CCTV Basement** | 7d | 2019-04-07 | 2019-04-13 |  | 292d |  | 56h | 1,926 |
| 55 | 1.4.7.1 | CCTV on the fourth floor | 7d | 2019-04-07 | 2019-04-13 | 30FS-7d | 292d | Electrician | 56h | 1,926 |
