# CMU_FLOOR4+Resource

Schedule from MS Project, 2018-10-17 to 2020-01-30, costs in ฿.

## Calendars

- CMU-Library Project Calendar: Mon-Sun 08:00-12:00, 13:00-17:00.

## Resources

| Resource |
| --- |
| General worker |
| Skilled carpenter |
| Electrician |
| Furniture |
| Sanitary-Plumber |

## Schedule

| ID | WBS | Task | Duration | Start | Finish | Predecessors | Baseline start | Baseline finish | Baseline duration | Total slack | Free slack | Constraint | Resources | Work | Cost | Baseline cost |
| --- | --- | --- | --- | --- | --- | --- | --- | --- | --- | --- | --- | --- | --- | --- | --- | --- |
| 1 | CMU1 | **Chiang Mai Library Renovation Project** | 471d | 2018-10-17 | 2020-01-30 |  | 2018-10-17 | 2020-01-30 | 471d | 0d |  |  |  | 18760h | 14,438,297.92 | 14,438,297.92 |
| 2 | CMU1.2 | **Renovation on the fourth floor** | 471d | 2018-10-17 | 2020-01-30 |  | 2018-10-17 | 2020-01-30 | 471d | 0d |  |  |  | 12048h | 8,076,511.71 | 8,076,511.71 |
| 3 | CMU1.2.1 | Demolition work on the 4th floor (Dismantled) | 30d | 2018-10-17 | 2018-11-15 |  | 2018-10-17 | 2018-11-15 | 30d | 0d |  |  | General worker | 240h | 169,430.58 | 169,430.58 |
| 4 | CMU1.2.2 | **Architecture Work on the Fourth Floor** | 395d | 2019-01-01 | 2020-01-30 |  | 2018-12-31 | 2020-01-30 | 396d | 0d |  |  |  | 2040h | 4,211,247.46 | 4,211,247.46 |
| 5 | CMU1.2.2.1 | Ceiling work | 30d | 2019-04-29 | 2019-05-28 | 6, 8, 9 | 2019-03-01 | 2019-03-30 | 30d | 247d |  |  | Skilled carpenter | 240h | 1,563,285.94 | 1,563,285.94 |
| 6 | CMU1.2.2.2 | Floor work | 60d | 2019-02-28 | 2019-04-28 | 3FS+45d | 2018-12-31 | 2019-02-28 | 60d | 247d | 0d | start no earlier than 2019-02-28 | General worker | 480h | 1,086,137.61 | 1,086,137.61 |
| 7 | CMU1.2.2.3 | Wall work | 30d | 2019-01-01 | 2019-01-30 | 3FS+45d | 2018-12-31 | 2019-01-29 | 30d | 305d | 0d | start no earlier than 2019-01-01 | General worker | 240h | 269,531.27 | 269,531.27 |
| 8 | CMU1.2.2.4 | Door and Window Work | 30d | 2019-01-31 | 2019-03-01 | 7 | 2019-01-30 | 2019-02-28 | 30d | 305d | 58d |  | Skilled carpenter | 240h | 293,793.17 | 293,793.17 |
| 9 | CMU1.2.2.5 | Staircase | 30d | 2019-01-31 | 2019-03-01 | 7 | 2019-01-30 | 2019-02-28 | 30d | 305d | 58d |  | General worker | 240h | 14,855.46 | 14,855.46 |
| 10 | CMU1.2.2.6 | Painting work | 30d | 2019-04-29 | 2019-05-28 | 6, 8, 9 | 2019-03-01 | 2019-03-30 | 30d | 247d |  |  | General worker | 240h | 214,728.86 | 214,728.86 |
| 11 | CMU1.2.2.7 | **Sanitary ware** | 315d | 2019-03-22 | 2020-01-30 |  | 2019-03-22 | 2020-01-30 | 315d | 0d |  |  |  | 360h | 768,915.15 | 768,915.15 |
| 12 | CMU1.2.2.7.1 | Zone T-1 the area in front of the original buidling | 15d | 2019-08-19 | 2019-09-02 | 13FS+135d | 2019-08-19 | 2019-09-02 | 15d | 0d |  |  | Sanitary-Plumber | 120h | 256,305.05 | 256,305.05 |
| 13 | CMU1.2.2.7.2 | Zone T-2 the area in the middle | 15d | 2019-03-22 | 2019-04-05 | 18, 22 | 2019-03-22 | 2019-04-05 | 15d | 0d |  |  | Sanitary-Plumber | 120h | 256,305.05 | 256,305.05 |
| 14 | CMU1.2.2.7.3 | Zone T3 the area behind the new building | 15d | 2020-01-16 | 2020-01-30 | 12FS+135d | 2020-01-16 | 2020-01-30 | 15d | 0d |  |  | Sanitary-Plumber | 120h | 256,305.05 | 256,305.05 |
| 15 | CMU1.2.3 | **Sanitation system work on the fourth floor** | 419d | 2018-11-16 | 2020-01-08 |  | 2018-11-16 | 2019-12-28 | 408d | 0d |  |  |  | 6048h | 203,774.16 | 203,774.16 |
| 16 | CMU1.2.3.1 | **Water supply pipe system work** | 419d | 2018-11-16 | 2020-01-08 |  | 2018-11-16 | 2019-12-28 | 408d | 0d |  |  |  | 3024h | 89,189.4 | 89,189.4 |
| 17 | CMU1.2.3.1.1 | Zone T-1 the area in front of the original buidling | 126d | 2019-04-06 | 2019-08-09 | 18FS+15d | 2019-04-06 | 2019-08-09 | 126d | 33d | 11d |  | Sanitary-Plumber | 1008h | 29,729.8 | 29,729.8 |
| 18 | CMU1.2.3.1.2 | Zone T-2 the area in the middle | 126d | 2018-11-16 | 2019-03-21 | 3 | 2018-11-16 | 2019-03-21 | 126d | 0d |  |  | Sanitary-Plumber | 1008h | 29,729.8 | 29,729.8 |
| 19 | CMU1.2.3.1.3 | Zone T3 the area behind the new building | 126d | 2019-09-05 | 2020-01-08 | 17FS+15d | 2019-08-25 | 2019-12-28 | 126d | 22d |  | start no earlier than 2019-09-05 | Sanitary-Plumber | 1008h | 29,729.8 | 29,729.8 |
| 20 | CMU1.2.3.2 | **Sewage pipe system, general sewer and air pipe** | 418d | 2018-11-16 | 2020-01-07 |  | 2018-11-16 | 2019-12-28 | 408d | 0d |  |  |  | 3024h | 114,584.76 | 114,584.76 |
| 21 | CMU1.2.3.2.1 | Zone T-1 the area in front of the original buidling | 126d | 2019-04-06 | 2019-08-09 | 22FS+15d | 2019-04-06 | 2019-08-09 | 126d | 33d | 10d |  | Sanitary-Plumber | 1008h | 38,194.92 | 38,194.92 |
| 22 | CMU1.2.3.2.2 | Zone T-2 the area in the middle | 126d | 2018-11-16 | 2019-03-21 | 18SS | 2018-11-16 | 2019-03-21 | 126d | 0d |  |  | Sanitary-Plumber | 1008h | 38,194.92 | 38,194.92 |
| 23 | CMU1.2.3.2.3 | Zone T3 the area behind the new building | 126d | 2019-09-04 | 2020-01-07 | 21FS+15d | 2019-08-25 | 2019-12-28 | 126d | 23d |  | start no earlier than 2019-09-04 | Sanitary-Plumber | 1008h | 38,194.92 | 38,194.92 |
| 24 | CMU1.2.4 | **Electrical system work on the 4th floor** | 342d | 2018-11-30 | 2019-11-06 |  | 2018-11-30 | 2019-03-26 | 117d | 85d |  |  |  | 2400h | 1,440,571.68 | 1,440,571.68 |
| 25 | CMU1.2.4.1 | Electric lamp | 30d | 2019-03-08 | 2019-04-06 | 27FS+7d | 2019-02-25 | 2019-03-26 | 30d | 299d |  | start no earlier than 2019-03-08 | Electrician | 240h | 726,675.37 | 726,675.37 |
| 26 | CMU1.2.4.2 | Switch and Electrical Socket | 30d | 2019-10-08 | 2019-11-06 | 27FS+7d | 2019-02-25 | 2019-03-26 | 30d | 85d |  | start no earlier than 2019-10-08 | Electrician | 240h | 317,559.49 | 317,559.49 |
| 27 | CMU1.2.4.3 | Electrical work and conduits | 80d | 2018-12-10 | 2019-02-27 | 30SS+30d | 2018-11-30 | 2019-02-17 | 80d | 300d | 1d | start no earlier than 2018-12-10 | Electrician | 640h | 175,019.46 | 175,019.46 |
| 28 | CMU1.2.4.4 | Speaker cable work and conduit | 80d | 2018-11-30 | 2019-02-17 | 30SS+30d | 2018-11-30 | 2019-02-17 | 80d | 347d |  |  | Electrician | 640h | 174,291.16 | 174,291.16 |
| 29 | CMU1.2.4.5 | CCTV system work and conduit pipe | 80d | 2018-11-30 | 2019-02-17 | 30SS+30d | 2018-11-30 | 2019-02-17 | 80d | 347d |  |  | Electrician | 640h | 47,026.2 | 47,026.2 |
| 30 | CMU1.2.5 | Durable goods and made to order work on the fourth floor | 165d | 2018-10-31 | 2019-04-13 | 3SS+14d | 2018-10-31 | 2019-04-13 | 165d | 277d | 0d |  | Skilled carpenter | 1320h | 2,051,487.83 | 2,051,487.83 |

| ID | WBS | Task | Duration | Start | Finish | Predecessors | Baseline start | Baseline finish | Baseline duration | Total slack | Constraint | Resources | Work | Cost | Baseline cost |
| --- | --- | --- | --- | --- | --- | --- | --- | --- | --- | --- | --- | --- | --- | --- | --- |
| 31 | CMU1.7 | **Computer system and fire alarm system** | 171d | 2019-04-29 | 2019-10-16 |  | 2018-11-30 | 2019-05-08 | 160d | 106d |  |  | 2560h | 638,051.49 | 638,051.49 |
| 32 | CMU1.7.1 | **Computer system** | 160d | 2019-04-29 | 2019-10-05 |  | 2018-11-30 | 2019-05-08 | 160d | 117d |  |  | 1280h | 337,667.41 | 638,051.49 |
| 33 | CMU1.7.1.1 | Fourth floor | 160d | 2019-04-29 | 2019-10-05 | 3FS+14d | 2018-11-30 | 2019-05-08 | 160d | 117d | start no earlier than 2019-04-29 | Electrician | 1280h | 337,667.41 | 337,667.41 |
| 34 | CMU1.7.2 | **Fire Alarm System** | 160d | 2019-05-10 | 2019-10-16 |  | 2018-11-30 | 2019-05-08 | 160d | 106d |  |  | 1280h | 300,384.08 | 300,384.08 |
| 35 | CMU1.7.2.1 | Fourth floor | 160d | 2019-05-10 | 2019-10-16 | 3FS+14d | 2018-11-30 | 2019-05-08 | 160d | 106d | start no earlier than 2019-05-10 | Electrician | 1280h | 300,384.08 | 300,384.08 |
| 36 | CMU1.8 | **Exterior paint, repair and exterior decoration of the building** | 170d | 2018-11-30 | 2019-05-18 |  | 2018-11-30 | 2019-02-27 | 90d | 257d |  |  | 2160h | 4,422,753.82 | 4,422,753.82 |
| 37 | CMU1.8.1 | **Exterior paint and exterior surface repair** | 170d | 2018-11-30 | 2019-05-18 |  | 2018-11-30 | 2019-02-27 | 90d | 257d |  |  | 2160h | 4,422,753.82 | 4,422,753.82 |
| 38 | CMU1.8.1.6 | Demolition of roof waterproofing (Dismantled) | 90d | 2018-11-30 | 2019-02-27 | 3FS+14d | 2018-11-30 | 2019-02-27 | 90d | 337d |  | General worker | 720h | 92,002.54 | 92,002.54 |
| 39 | CMU1.8.1.7 | Sand blasting waterproofing sheet material | 90d | 2018-11-30 | 2019-02-27 | 3FS+14d | 2018-11-30 | 2019-02-27 | 90d | 337d |  | General worker | 720h | 1,051,457.6 | 1,051,457.6 |
| 40 | CMU1.8.1.8 | Polyurethane waterproofing, ultra-flexible oil formula, resistant to UV light, Xander, Ardex or equivalent. | 90d | 2019-02-18 | 2019-05-18 | 3FS+14d | 2018-11-30 | 2019-02-27 | 90d | 257d | start no earlier than 2019-02-18 | General worker | 720h | 3,279,293.68 | 3,279,293.68 |
| 41 | CMU1.10 | **Durable Goods** | 209d | 2018-12-01 | 2019-06-27 |  | 2018-11-30 | 2019-05-08 | 160d | 217d |  |  | 1992h | 1,300,980.9 | 1,300,980.9 |
| 42 | CMU1.10.1 | **Floating furniture** | 15d | 2019-04-14 | 2019-04-28 |  | 2019-04-14 | 2019-04-28 | 15d | 277d |  |  | 120h | 825,783.2 | 825,783.2 |
| 43 | CMU1.10.1.5 | Floating furniture on the fourth floor | 15d | 2019-04-14 | 2019-04-28 | 30 | 2019-04-14 | 2019-04-28 | 15d | 277d |  | Skilled carpenter | 120h | 825,783.2 | 825,783.2 |
| 44 | CMU1.10.2 | **Repair furniture work** | 30d | 2019-05-29 | 2019-06-27 |  | 2019-03-30 | 2019-04-28 | 30d | 217d |  |  | 240h | 81,855 | 81,855 |
| 45 | CMU1.10.2.4 | Furniture repair work on the fourth floor | 30d | 2019-05-29 | 2019-06-27 | 30FS-15d | 2019-03-30 | 2019-04-28 | 30d | 217d | start no earlier than 2019-05-29 | Skilled carpenter | 240h | 81,855 | 81,855 |
| 46 | CMU1.10.3 | **Curtain work** | 15d | 2019-04-14 | 2019-04-28 |  | 2019-04-14 | 2019-04-28 | 15d | 277d |  |  | 120h | 113,741 | 113,741 |
| 47 | CMU1.10.3.4 | Curtain on the fourth floor | 15d | 2019-04-14 | 2019-04-28 | 30 | 2019-04-14 | 2019-04-28 | 15d | 277d |  | Skilled carpenter | 120h | 113,741 | 113,741 |
| 48 | CMU1.10.4 | **Signs** | 15d | 2019-04-14 | 2019-04-28 |  | 2019-04-14 | 2019-04-28 | 15d | 277d |  |  | 120h | 26,750 | 26,750 |
| 49 | CMU1.10.4.5 | Signs on the fourth floor | 15d | 2019-04-14 | 2019-04-28 | 30 | 2019-04-14 | 2019-04-28 | 15d | 277d |  | Skilled carpenter | 120h | 26,750 | 26,750 |
| 50 | CMU1.10.6 | **TWO WIRE REMOTE CONTROL LIGHTING SYSTEM** | 160d | 2018-12-01 | 2019-05-09 |  | 2018-11-30 | 2019-05-08 | 160d | 266d |  |  | 1280h | 247,715.7 | 247,715.7 |
| 51 | CMU1.10.6.5 | Two wire remote control lighting system for the fourth floor | 160d | 2018-12-01 | 2019-05-09 | 3FS+14d | 2018-11-30 | 2019-05-08 | 160d | 266d | start no earlier than 2018-12-01 | Electrician | 1280h | 247,715.7 | 247,715.7 |
| 52 | CMU1.10.7 | **Sound system (Using previous speakers)** | 7d | 2019-04-07 | 2019-04-13 |  | 2019-04-07 | 2019-04-13 | 7d | 292d |  |  | 56h | 3,210 | 3,210 |
| 53 | CMU1.10.7.5 | Sound system for the forth floor | 7d | 2019-04-07 | 2019-04-13 | 30FS-7d | 2019-04-07 | 2019-04-13 | 7d | 292d |  | Electrician | 56h | 3,210 | 3,210 |
| 54 | CMU1.10.8 | **CCTV system (Using the previous CCTV system)** | 7d | 2019-04-07 | 2019-04-13 |  | 2019-04-07 | 2019-04-13 | 7d | 292d |  |  | 56h | 1,926 | 1,926 |
| 55 | CMU1.10.8.5 | CCTV on the fourth floor | 7d | 2019-04-07 | 2019-04-13 | 30FS-7d | 2019-04-07 | 2019-04-13 | 7d | 292d |  | Electrician | 56h | 1,926 | 1,926 |
